# EventsExample

Schedule from Primavera P6, 2000-02-24 to 2000-08-23, A marks actual dates.
Must finish by 2000-08-23

## Resources

| Resource | Group | Rate |
| --- | --- | --- |
| Accountant | labor | 11 |
| Manager | labor | 10 |
| Business Advisor | labor | 15 |
| Owners | labor |  |
| Peers | labor |  |
| Lawyer | labor | 90 |
| Banker | labor |  |
| Government Agency | material |  |
| Information Services | labor |  |

## Schedule

| ID | WBS | Activity | Type | Duration | Start | Finish | Predecessors | Complete | Remaining | Total float | Free float | Expected finish | Resources | Cost | Actual cost |
| --- | --- | --- | --- | --- | --- | --- | --- | --- | --- | --- | --- | --- | --- | --- | --- |
|  | 1 | **Phase 1 - Strategic Plan** |  |  | 2000-02-24 | 2000-03-27 |  |  |  |  |  |  |  |  |  |
| A1190 |  | Review and modify the strategic plan |  | 2d | 2000-03-24 | 2000-03-27 | A1180 |  |  | 0d |  | 2000-03-27 |  |  |  |
| A1200 |  | Confirm decision to proceed | milestone | 0d | 2000-03-27 | 2000-03-27 | A1190 |  |  | 0d |  | 2000-03-27 |  |  |  |
|  | 1.1 | **Self-Assessment** |  |  | 2000-02-24 | 2000-03-01 |  |  |  |  |  |  |  |  |  |
| A1000 |  | Mau & Ago business |  | 5d | 2000-02-24 A | 2000-03-01 |  | 40% | 3d | 125d |  | 2000-03-01 | Accountant [40 h] | 440 | 176 |
| A1010 |  | Define business vision |  | 1d | 2000-02-24 | 2000-02-24 |  |  |  | 0d |  | 2000-02-24 | Manager [8 h] | 80 |  |
| A1020 |  | Identify available skills, information and support |  | 1d | 2000-02-25 | 2000-02-25 | A1010 |  |  | 0d |  | 2000-02-25 | Business Advisor [8 h]; Manager [8 h] | 200 |  |
| A1030 |  | Decide whether to proceed |  | 1d | 2000-02-28 | 2000-02-28 | A1020 |  |  | 0d |  | 2000-02-28 | Manager [8 h] | 80 |  |
|  | 1.2 | **Define the Opportunity** |  |  | 2000-02-29 | 2000-03-13 |  |  |  |  |  |  |  |  |  |
| A1040 |  | Research the market and competition |  | 1d | 2000-02-29 | 2000-02-29 | A1030 |  |  | 0d |  | 2000-02-29 | Business Advisor [8 h] | 120 |  |
| A1050 |  | Interview owners of similar businesses |  | 5d | 2000-03-01 | 2000-03-07 | A1040 |  |  | 0d |  | 2000-03-07 | Owners [40 h] |  |  |
| A1060 |  | Identify needed resources |  | 2d | 2000-03-08 | 2000-03-09 | A1050 |  |  | 0d |  | 2000-03-09 | Business Advisor [16 h]; Peers [16 h] | 240 |  |
| A1070 |  | Identify operating cost elements |  | 2d | 2000-03-10 | 2000-03-13 | A1060 |  |  | 0d |  | 2000-03-13 | Accountant [16 h] | 176 |  |
|  | 1.3 | **Evaluate Business Approach** |  |  | 2000-03-14 | 2000-03-17 |  |  |  |  |  |  |  |  |  |
| A1080 |  | Define new entity requirements |  | 1d | 2000-03-14 | 2000-03-14 | A1070 |  |  | 0d |  | 2000-03-14 | Manager [8 h] | 80 |  |
| A1090 |  | Identify on-going business purchase opportunities |  | 1d | 2000-03-15 | 2000-03-15 | A1080 |  |  | 0d |  | 2000-03-15 | Manager [8 h] | 80 |  |
| A1100 |  | Research franchise possibilities |  | 1d | 2000-03-16 | 2000-03-16 | A1090 |  |  | 0d |  | 2000-03-16 | Manager [8 h] | 80 |  |
| A1110 |  | Summarize business approach |  | 1d | 2000-03-17 | 2000-03-17 | A1100 |  |  | 0d |  | 2000-03-17 | Manager [8 h] | 80 |  |
|  | 1.4 | **Evaluate Potential Risks and Rewards** |  |  | 2000-03-15 | 2000-03-24 |  |  |  |  |  |  |  |  |  |
| A1120 |  | Assess market size and stability |  | 2d | 2000-03-15 | 2000-03-16 | A1080 |  |  | 110d | 0d | 2000-03-16 | Business Advisor [16 h] | 240 |  |
| A1130 |  | Estimate the competition |  | 1d | 2000-03-17 | 2000-03-17 | A1120 |  |  | 110d | 0d | 2000-03-17 | Business Advisor [8 h] | 120 |  |
| A1160 |  | Determine financial requirements |  | 2d | 2000-03-20 | 2000-03-21 | A1110 |  |  | 0d |  | 2000-03-21 | Business Advisor [16 h] | 240 |  |
| A1140 |  | Assess needed resource availability |  | 2d | 2000-03-22 | 2000-03-23 | A1130 |  |  | 108d | 0d | 2000-03-23 | Business Advisor [16 h] | 240 |  |
| A1170 |  | Review personal suitability |  | 1d | 2000-03-22 | 2000-03-22 | A1160 |  |  | 0d |  | 2000-03-22 | Manager [8 h] | 80 |  |
| A1180 |  | Evaluate initial profitability |  | 1d | 2000-03-23 | 2000-03-23 | A1170 |  |  | 0d |  | 2000-03-23 | Manager [8 h] | 80 |  |
| A1150 |  | Evaluate realistic initial market share |  | 1d | 2000-03-24 | 2000-03-24 | A1140 |  |  | 108d |  | 2000-03-24 | Business Advisor [8 h] | 120 |  |

| ID | WBS | Activity | Type | Duration | Start | Finish | Predecessors | Total float | Expected finish | Resources | Cost |
| --- | --- | --- | --- | --- | --- | --- | --- | --- | --- | --- | --- |
|  | 2 | **Phase 2 - Define the Business Opportunity** |  |  | 2000-03-28 | 2000-05-02 |  |  |  |  |  |
| A1360 |  | Review and modify the business opportunity |  | 1d | 2000-05-02 | 2000-05-02 | A1350 | 0d | 2000-05-02 |  |  |
| A1370 |  | Confirm decision to proceed | milestone | 0d | 2000-05-02 | 2000-05-02 | A1360 | 0d | 2000-05-02 | Business Advisor; Peers; Lawyer; Accountant |  |
|  | 2.1 | **Define the Market** |  |  | 2000-03-28 | 2000-04-13 |  |  |  |  |  |
| A1210 |  | Access available information |  | 1d | 2000-03-28 | 2000-03-28 | A1200 | 0d | 2000-03-28 | Business Advisor [8 h] | 120 |
| A1220 |  | Create market analysis plan |  | 2d | 2000-03-29 | 2000-03-30 | A1210 | 0d | 2000-03-30 | Business Advisor [16 h] | 240 |
| A1230 |  | Implement market analysis plan |  | 5d | 2000-03-31 | 2000-04-06 | A1220 | 0d | 2000-04-06 | Business Advisor [40 h] | 600 |
| A1240 |  | Identify competition |  | 2d | 2000-04-07 | 2000-04-10 | A1230 | 0d | 2000-04-10 | Business Advisor [16 h] | 240 |
| A1250 |  | Summarize the market |  | 2d | 2000-04-11 | 2000-04-12 | A1240 | 0d | 2000-04-12 | Business Advisor [16 h] | 240 |
| A1260 |  | Identify target market niche |  | 1d | 2000-04-13 | 2000-04-13 | A1250 | 0d | 2000-04-13 | Business Advisor [8 h] | 120 |
|  | 2.2 | **Identify Needed Materials and Supplies** |  |  | 2000-04-13 | 2000-04-21 |  |  |  |  |  |
| A1270 |  | Select a business approach (from "Evaluate Business Approach" above) |  | 2d | 2000-04-13 | 2000-04-14 | A1210 SS, A1260 SS | 0d | 2000-04-14 | Manager [16 h] | 160 |
| A1280 |  | Identify management staff resources |  | 1d | 2000-04-17 | 2000-04-17 | A1270 | 0d | 2000-04-17 | Manager [8 h] | 80 |
| A1290 |  | Identify staffing requirements |  | 1d | 2000-04-18 | 2000-04-18 | A1280 | 0d | 2000-04-18 | Manager [8 h] | 80 |
| A1300 |  | Identify needed raw materials |  | 1d | 2000-04-19 | 2000-04-19 | A1290 | 0d | 2000-04-19 | Manager [8 h] | 80 |
| A1310 |  | Identify needed utilities |  | 1d | 2000-04-20 | 2000-04-20 | A1300 | 0d | 2000-04-20 | Manager [8 h] | 80 |
| A1320 |  | Summarize operating expenses and financial projections |  | 1d | 2000-04-21 | 2000-04-21 | A1310 | 0d | 2000-04-21 | Manager [8 h] | 80 |
|  | 2.3 | **Evaluate Potential Risks and Rewards** |  |  | 2000-04-24 | 2000-05-01 |  |  |  |  |  |
| A1330 |  | Assess market size and stability |  | 2d | 2000-04-24 | 2000-04-25 | A1320 | 0d | 2000-04-25 | Manager [16 h] | 160 |
| A1340 |  | Assess needed resources availability |  | 2d | 2000-04-26 | 2000-04-27 | A1330 | 0d | 2000-04-27 | Manager [16 h] | 160 |
| A1350 |  | Forecast financial returns |  | 2d | 2000-04-28 | 2000-05-01 | A1340 | 0d | 2000-05-01 | Accountant [16 h] | 176 |
|  | 3 | **Phase 3 - Plan for Action** |  |  | 2000-05-03 | 2000-05-31 |  |  |  |  |  |
|  | 3.1 | **Develop Detailed 5-Year Business Plan** |  |  | 2000-05-03 | 2000-05-31 |  |  |  |  |  |
| A1380 |  | Describe the vision and opportunity |  | 1d | 2000-05-03 | 2000-05-03 | A1370 | 0d | 2000-05-03 | Business Advisor [8 h] | 120 |
| A1390 |  | List assumptions |  | 1d | 2000-05-04 | 2000-05-04 | A1380 | 0d | 2000-05-04 | Business Advisor [8 h] | 120 |
| A1400 |  | Describe the market |  | 1d | 2000-05-05 | 2000-05-05 | A1390 | 0d | 2000-05-05 | Business Advisor [8 h] | 120 |
| A1410 |  | Describe the new business |  | 1d | 2000-05-08 | 2000-05-08 | A1400 | 0d | 2000-05-08 | Business Advisor [8 h] | 120 |
| A1420 |  | Describe strengths, weaknesses, assets and threats |  | 1d | 2000-05-09 | 2000-05-09 | A1410 | 0d | 2000-05-09 | Business Advisor [8 h] | 120 |
| A1430 |  | Estimate sales volume during startup period |  | 1d | 2000-05-10 | 2000-05-10 | A1420 | 0d | 2000-05-10 | Business Advisor [8 h]; Accountant [8 h] | 208 |
| A1440 |  | Forecast operating costs |  | 1d | 2000-05-11 | 2000-05-11 | A1430 | 0d | 2000-05-11 | Business Advisor [8 h]; Accountant [8 h] | 208 |
| A1450 |  | Establish pricing strategy |  | 1d | 2000-05-12 | 2000-05-12 | A1440 | 0d | 2000-05-12 | Business Advisor [8 h] | 120 |
| A1460 |  | Forecast revenue |  | 1d | 2000-05-15 | 2000-05-15 | A1450 | 0d | 2000-05-15 | Business Advisor [8 h] | 120 |
| A1470 |  | Summarize pro-forma financial statement |  | 2d | 2000-05-16 | 2000-05-17 | A1460 | 0d | 2000-05-17 | Business Advisor [16 h] | 240 |
| A1480 |  | Develop break-even analysis |  | 1d | 2000-05-18 | 2000-05-18 | A1470 | 0d | 2000-05-18 | Business Advisor [8 h] | 120 |
| A1490 |  | Develop cash-flow projection |  | 1d | 2000-05-19 | 2000-05-19 | A1480 | 0d | 2000-05-19 | Business Advisor [8 h] | 120 |
| A1500 |  | Identify licensing and permitting requirements |  | 1d | 2000-05-22 | 2000-05-22 | A1490 | 0d | 2000-05-22 | Business Advisor [8 h] | 120 |
| A1510 |  | Develop startup plan |  | 2d | 2000-05-23 | 2000-05-24 | A1500 | 0d | 2000-05-24 | Business Advisor [16 h] | 240 |
| A1520 |  | Develop sales and marketing strategy |  | 1d | 2000-05-25 | 2000-05-25 | A1510 | 0d | 2000-05-25 | Business Advisor [8 h] | 120 |
| A1530 |  | Develop distribution structure |  | 1d | 2000-05-26 | 2000-05-26 | A1520 | 0d | 2000-05-26 | Business Advisor [8 h] | 120 |
| A1540 |  | Describe risks and opportunities |  | 2d | 2000-05-29 | 2000-05-30 | A1530 | 0d | 2000-05-30 | Business Advisor [16 h] | 240 |
| A1550 |  | Publish the business plan |  | 1d | 2000-05-31 | 2000-05-31 | A1540 | 0d | 2000-05-31 | Business Advisor [8 h] | 120 |
| A1560 |  | Confirm decision to proceed | milestone | 0d | 2000-05-31 | 2000-05-31 | A1550 | 0d | 2000-05-31 | Business Advisor |  |

| ID | WBS | Activity | Type | Duration | Start | Finish | Predecessors | Total float | Free float | Expected finish | Resources | Cost |
| --- | --- | --- | --- | --- | --- | --- | --- | --- | --- | --- | --- | --- |
|  | 4 | **Phase 4 - Proceed With Startup Plan** |  |  | 2000-06-01 | 2000-08-23 |  |  |  |  |  |  |
| A1570 |  | Choose a location |  | 1d | 2000-06-01 | 2000-06-01 | A1560 | 0d |  | 2000-06-01 |  |  |
| A1820 |  | Start up the business | milestone | 0d | 2000-08-23 | 2000-08-23 | A1780, A1810 | 0d |  | 2000-08-23 | Manager |  |
|  | 4.2 | **Establish Business Structure** |  |  | 2000-06-02 | 2000-07-10 |  |  |  |  |  |  |
| A1620 |  | Choose legal representation |  | 1d | 2000-06-12 | 2000-06-12 | A1600 SS, A1610 SS | 0d |  | 2000-06-12 | Lawyer [8 h] | 720 |
| A1630 |  | Select business tax-basis category |  | 2d | 2000-06-13 | 2000-06-14 | A1620 | 0d |  | 2000-06-14 | Lawyer [16 h]; Accountant [16 h] | 1,616 |
| A1640 |  | Choose capital funding source |  | 2d | 2000-06-15 | 2000-06-16 | A1630 | 0d |  | 2000-06-16 | Manager [16 h] | 160 |
| A1650 |  | Commit capital funding | milestone | 0d | 2000-06-16 | 2000-06-16 | A1640 | 0d |  | 2000-06-16 | Manager |  |
|  | 4.2.1 | **Choose a Name** |  |  | 2000-06-02 | 2000-06-05 |  |  |  |  |  |  |
| A1580 |  | Identify implications |  | 1d | 2000-06-02 | 2000-06-02 | A1570 | 0d |  | 2000-06-02 | Lawyer [8 h] | 720 |
| A1590 |  | Research name availability |  | 1d | 2000-06-05 | 2000-06-05 | A1580 | 0d |  | 2000-06-05 | Lawyer [8 h] | 720 |
|  | 4.2.2 | **Choose a Bank** |  |  | 2000-06-06 | 2000-06-12 |  |  |  |  |  |  |
| A1600 |  | Establish accounts |  | 4d | 2000-06-06 | 2000-06-09 | A1590 | 0d |  | 2000-06-09 | Banker [32 h] |  |
| A1610 |  | Establish line of credit |  | 1d | 2000-06-12 | 2000-06-12 | A1600 | 0d |  | 2000-06-12 | Banker [8 h] |  |
|  | 4.2.7 | **Establish the Operating Control Base** |  |  | 2000-06-19 | 2000-07-10 |  |  |  |  |  |  |
| A1660 |  | Choose and set up the accounting system |  | 2d | 2000-06-19 | 2000-06-20 | A1640, A1650 | 0d |  | 2000-06-20 | Accountant [16 h] | 176 |
| A1670 |  | Obtain required licenses and permits |  | 8d | 2000-06-21 | 2000-06-30 | A1660 | 0d |  | 2000-06-30 | Lawyer [64 h]; Government Agency [1.02] | 5,760 |
| A1680 |  | Obtain needed insurance |  | 4d | 2000-07-03 | 2000-07-06 | A1670 | 0d |  | 2000-07-06 | Accountant [32 h] | 352 |
| A1690 |  | Establish security plan |  | 2d | 2000-07-07 | 2000-07-10 | A1680 | 0d |  | 2000-07-10 | Business Advisor [16 h]; Lawyer [16 h] | 1,680 |
|  | 4.2.8 | **Develop Marketing Program** |  |  | 2000-06-05 | 2000-06-08 |  |  |  |  |  |  |
| A1700 |  | Establish an advertising program |  | 2d | 2000-06-05 | 2000-06-06 | A1590 SS | 22d | 0d | 2000-06-06 | Business Advisor [16 h] | 240 |
| A1710 |  | Develop a logo |  | 1d | 2000-06-07 | 2000-06-07 | A1700 | 22d | 0d | 2000-06-07 | Business Advisor [8 h]; Lawyer [8 h] | 840 |
| A1720 |  | Order promotional materials |  | 1d | 2000-06-08 | 2000-06-08 | A1710 | 22d |  | 2000-06-08 | Business Advisor [8 h] | 120 |
|  | 4.3 | **Provide Physical Facilities** |  |  | 2000-07-11 | 2000-08-23 |  |  |  |  |  |  |
| A1730 |  | Secure operation space |  | 5d | 2000-07-11 | 2000-07-17 | A1690, A1720 | 0d |  | 2000-07-17 | Lawyer [40 h] | 3,600 |
| A1740 |  | Select computer network hardware |  | 1d | 2000-07-18 | 2000-07-18 | A1730 | 0d |  | 2000-07-18 | Information Services [8 h] |  |
| A1750 |  | Select computer software |  | 1d | 2000-07-19 | 2000-07-19 | A1740 | 0d |  | 2000-07-19 | Information Services [8 h] |  |
| A1760 |  | Establish utilities |  | 3d | 2000-07-21 | 2000-07-25 | A1750 | 0d |  | 2000-07-25 | Manager [24 h] | 240 |
| A1770 |  | Provide furniture and equipment |  | 4d | 2000-07-26 | 2000-07-31 | A1760 | 0d |  | 2000-07-31 | Manager [32 h] | 320 |
| A1780 |  | Move in |  | 1d | 2000-08-23 | 2000-08-23 | A1770 | 0d |  | 2000-08-23 | Manager [8 h] | 80 |

| ID | WBS | Activity | Duration | Start | Finish | Predecessors | Total float | Free float | Expected finish | Resources | Cost |
| --- | --- | --- | --- | --- | --- | --- | --- | --- | --- | --- | --- |
|  | 4.4 | **Provide Staffing** |  | 2000-06-19 | 2000-08-22 |  |  |  |  |  |  |
| A1790 |  | Interview and test candidates | 14d | 2000-06-19 | 2000-07-06 | A1640 | 1d | 0d | 2000-07-06 | Manager [112 h] | 1,120 |
| A1800 |  | Hire staff | 10d | 2000-07-07 | 2000-07-20 | A1790 | 1d | 0d | 2000-07-20 | Manager [80 h] | 800 |
| A1810 |  | Train staff | 16d | 2000-08-01 | 2000-08-22 | A1800 | 1d |  | 2000-08-22 | Manager [128 h] | 1,280 |
